# Agile Project Management

Schedule from MS Project, 2025-09-29 to 2025-11-21, costs in zł, A marks actual dates.
DT

## Calendars

- Standardowy: Mon-Fri 09:00-13:00, 14:00-18:00; Sat-Sun off.

## Resources

| Resource | Group | Rate |
| --- | --- | --- |
| Joe | Product Owner | 60 |
| Makise | Scrum Master | 45 |
| Amush | Developer Backend | 50 |
| Lucjusz | Developer Frontend | 50 |
| Okabe | Developer Tester | 40 |

## Schedule

| ID | WBS | Task | Type | Duration | Start | Finish | Complete | Actual start | Actual finish | Baseline start | Baseline finish | Baseline duration | Resources | Work | Actual work | Cost | Baseline cost | Actual cost |
| --- | --- | --- | --- | --- | --- | --- | --- | --- | --- | --- | --- | --- | --- | --- | --- | --- | --- | --- |
| 1 | 1 | **Sprint 1** |  | 10d | 2025-09-29 | 2025-10-10 A | 100% | 2025-09-30 |  | 2025-09-29 | 2025-10-10 | 10d |  | 83.2h | 83.2h | 4,020 | 4,020 | 4,020 |
| 2 | 1.1 | **Analiza wymagań i dokumentacja** |  | 10d | 2025-09-29 | 2025-10-10 | 100% | 2025-09-30 | 2025-10-02 | 2025-09-29 | 2025-10-10 | 10d |  | 28h | 28h | 1,260 | 1,260 | 1,260 |
| 3 | 1.1.1 | Analiza wymagań biznesowych | manual | 2.5d | 2025-09-30 A | 2025-10-02 A | 100% |  |  | 2025-09-30 | 2025-10-03 | 3d | Makise | 20h | 20h | 900 | 900 | 900 |
| 4 | 1.1.2 | Spisanie dokumentacji projektu | manual | 1d | 2025-10-02 A | 2025-10-02 A | 100% |  |  | 2025-10-01 | 2025-10-01 | 1d | Makise | 8h | 8h | 360 | 360 | 360 |
| 5 | 1.2 | **Projekt interfejsu (UI)** |  | 10d | 2025-09-29 | 2025-10-10 | 100% | 2025-09-30 | 2025-10-07 | 2025-09-29 | 2025-10-10 | 10d |  | 31.2h | 31.2h | 1,560 | 1,560 | 1,560 |
| 6 | 1.2.1 | Projekt makiety strony głównej | manual | 2d | 2025-09-30 A | 2025-10-03 A | 100% |  |  | 2025-09-30 | 2025-10-03 | 2d | Lucjusz | 16h | 16h | 800 | 800 | 800 |
| 7 | 1.2.2 | Projekt formularzy | manual | 1.38d | 2025-10-01 A | 2025-10-07 A | 100% |  |  | 2025-10-01 | 2025-10-07 | 1.38d | Lucjusz | 11h | 11h | 550 | 550 | 550 |
| 8 | 1.2.3 | Dobór stylów CSS i fontów | manual | 0.53d | 2025-10-02 A | 2025-10-06 A | 100% |  |  | 2025-10-02 | 2025-10-06 | 0.53d | Lucjusz | 4.2h | 4.2h | 210 | 210 | 210 |
| 9 | 1.3 | **Rejestracja i logowanie** |  | 10d | 2025-09-29 | 2025-10-10 A | 100% | 2025-10-01 |  | 2025-09-29 | 2025-10-10 | 10d |  | 24h | 24h | 1,200 | 1,200 | 1,200 |
| 10 | 1.3.1 | Utworzenie tabeli 'Users' w DB | manual | 0.5d | 2025-10-01 A | 2025-10-03 A | 100% |  |  | 2025-10-01 | 2025-10-03 | 0.5d | Amush | 4h | 4h | 200 | 200 | 200 |
| 11 | 1.3.2 | API Backend: Logowanie | manual | 1.5d | 2025-10-03 A | 2025-10-09 A | 100% |  |  | 2025-10-03 | 2025-10-09 | 1.5d | Amush | 12h | 12h | 600 | 600 | 600 |
| 12 | 1.3.3 | Frontend: Formularz HTML/JS | manual | 1d | 2025-10-06 A | 2025-10-10 A | 100% |  |  | 2025-10-06 | 2025-10-10 | 1d | Lucjusz | 8h | 8h | 400 | 400 | 400 |
| 13 | 2 | **Sprint 2** |  | 2w | 2025-10-13 | 2025-10-24 | 100% | 2025-10-14 | 2025-10-23 | 2025-10-13 | 2025-10-24 | 2w |  | 85.6h | 85.6h | 4,216 | 4,216 | 4,216 |
| 14 | 2.1 | **Katalog produktów (Backend + Lista)** |  | 10d | 2025-10-13 | 2025-10-24 | 100% | 2025-10-14 | 2025-10-20 | 2025-10-13 | 2025-10-24 | 10d |  | 33.6h | 33.6h | 1,680 | 1,680 | 1,680 |
| 15 | 2.1.1 | Backend: Endpoint GET /products | manual | 1.5d | 2025-10-14 A | 2025-10-15 A | 100% |  |  | 2025-10-14 | 2025-10-15 | 1.5d | Amush | 12h | 12h | 600 | 600 | 600 |
| 16 | 2.1.2 | Frontend: Widok listy (HTML/CSS) | manual | 1.25d | 2025-10-14 A | 2025-10-17 A | 100% |  |  | 2025-10-14 | 2025-10-17 | 1.25d | Lucjusz | 10h | 10h | 500 | 500 | 500 |
| 17 | 2.1.3 | Frontend: Pobieranie danych (JS) | manual | 1.45d | 2025-10-16 A | 2025-10-20 A | 100% |  |  | 2025-10-16 | 2025-10-20 | 1.45d | Lucjusz | 11.6h | 11.6h | 580 | 580 | 580 |
| 18 | 2.2 | **Filtrowanie produktów** |  | 10d | 2025-10-13 | 2025-10-24 | 100% | 2025-10-14 | 2025-10-20 | 2025-10-13 | 2025-10-24 | 10d |  | 20.8h | 20.8h | 976 | 976 | 976 |
| 19 | 2.2.1 | Backend: Zapytania SQL (WHERE) | manual | 1.6d | 2025-10-17 A | 2025-10-20 A | 100% |  |  | 2025-10-14 | 2025-10-16 | 1.5d | Makise | 12.8h | 12.8h | 576 | 576 | 576 |
| 20 | 2.2.2 | Frontend: Pasek boczny filtrów | manual | 1.25d | 2025-10-14 A | 2025-10-16 A | 100% |  |  | 2025-10-14 | 2025-10-16 | 1.25d | Lucjusz | 8h | 8h | 400 | 400 | 400 |
| 21 | 2.3 | **Koszyk zakupowy** |  | 10d | 2025-10-13 | 2025-10-24 | 100% | 2025-10-14 | 2025-10-23 | 2025-10-13 | 2025-10-24 | 10d |  | 31.2h | 31.2h | 1,560 | 1,560 | 1,560 |
| 22 | 2.3.1 | Backend: Sesja koszyka (Logic) | manual | 1.9d | 2025-10-14 A | 2025-10-20 A | 100% |  |  | 2025-10-14 | 2025-10-20 | 1.9d | Amush | 15.2h | 15.2h | 760 | 760 | 760 |
| 23 | 2.3.2 | Frontend: Przycisk Dodaj (JS) | manual | 0.5d | 2025-10-17 A | 2025-10-17 A | 100% |  |  | 2025-10-17 | 2025-10-17 | 0.5d | Lucjusz | 4h | 4h | 200 | 200 | 200 |
| 24 | 2.3.3 | Frontend: Widok koszyka (Table) | manual | 1.5d | 2025-10-21 A | 2025-10-23 A | 100% |  |  | 2025-10-21 | 2025-10-23 | 1.5d | Lucjusz | 12h | 12h | 600 | 600 | 600 |

| ID | WBS | Task | Type | Duration | Start | Finish | Complete | Actual start | Actual finish | Baseline start | Baseline finish | Baseline duration | Resources | Work | Actual work | Cost | Baseline cost | Actual cost |
| --- | --- | --- | --- | --- | --- | --- | --- | --- | --- | --- | --- | --- | --- | --- | --- | --- | --- | --- |
| 25 | 3 | **Sprint 3** |  | 10d | 2025-10-27 | 2025-11-07 | 100% | 2025-10-28 | 2025-11-05 | 2025-10-27 | 2025-11-07 | 10d |  | 84.8h | 84.8h | 4,210 | 4,210 | 4,210 |
| 26 | 3.1 | **Proces składania zamówienia** |  | 10d | 2025-10-27 | 2025-11-07 | 100% | 2025-10-28 | 2025-10-31 | 2025-10-27 | 2025-11-07 | 10d |  | 22.4h | 22.4h | 1,090 | 1,090 | 1,090 |
| 27 | 3.1.1 | Backend: API zapisu zamówienia | manual | 1d | 2025-10-28 A | 2025-10-31 A | 100% |  |  | 2025-10-28 | 2025-10-31 | 1d | Amush | 8h | 8h | 400 | 400 | 400 |
| 28 | 3.1.2 | Frontend: Formularz dostawy | manual | 1.05d | 2025-10-28 A | 2025-10-31 A | 100% |  |  | 2025-10-28 | 2025-10-31 | 1.05d | Lucjusz | 8.4h | 8.4h | 420 | 420 | 420 |
| 29 | 3.1.3 | DB: Tabela Orders i relacje | manual | 0.75d | 2025-10-28 A | 2025-10-30 A | 100% |  |  | 2025-10-28 | 2025-10-30 | 0.75d | Makise | 6h | 6h | 270 | 270 | 270 |
| 30 | 3.2 | **Bramka płatności (Integracja)** |  | 10d | 2025-10-27 | 2025-11-07 | 100% | 2025-10-28 | 2025-11-03 | 2025-10-27 | 2025-11-07 | 10d |  | 24h | 24h | 1,200 | 1,200 | 1,200 |
| 31 | 3.2.1 | Integracja API (klucze, connect) | manual | 2d | 2025-10-28 A | 2025-11-03 A | 100% |  |  | 2025-10-28 | 2025-11-03 | 2d | Amush | 16h | 16h | 800 | 800 | 800 |
| 32 | 3.2.2 | Obsługa statusów płatności (UI) | manual | 1d | 2025-10-28 A | 2025-10-31 A | 100% |  |  | 2025-10-28 | 2025-10-31 | 1d | Lucjusz | 8h | 8h | 400 | 400 | 400 |
| 33 | 3.3 | **Panel administracyjny** |  | 10d | 2025-10-27 | 2025-11-07 | 100% | 2025-10-28 | 2025-11-05 | 2025-10-27 | 2025-11-07 | 10d |  | 38.4h | 38.4h | 1,920 | 1,920 | 1,920 |
| 34 | 3.3.1 | Layout panelu i Dashboard | manual | 1.8d | 2025-10-28 A | 2025-11-05 A | 100% |  |  | 2025-10-28 | 2025-11-05 | 1.8d | Lucjusz | 14.4h | 14.4h | 720 | 720 | 720 |
| 35 | 3.3.2 | Backend: Edycja produktów | manual | 1.5d | 2025-10-28 A | 2025-11-03 A | 100% |  |  | 2025-10-28 | 2025-11-03 | 1.5d | Amush | 12h | 12h | 600 | 600 | 600 |
| 36 | 3.3.3 | Frontend: Lista zamówień (View) | manual | 1.5d | 2025-10-28 A | 2025-11-05 A | 100% |  |  | 2025-10-28 | 2025-11-05 | 1.5d | Lucjusz | 12h | 12h | 600 | 600 | 600 |
| 37 | 4 | **Sprint 4** |  | 10d | 2025-11-10 | 2025-11-21 | 100% | 2025-11-11 | 2025-11-17 | 2025-11-10 | 2025-11-21 | 10d |  | 92h | 92h | 3,952 | 3,952 | 3,952 |
| 38 | 4.1 | **Testy funkcjonalne i integracyjne** |  | 10d | 2025-11-10 | 2025-11-21 | 100% | 2025-11-11 | 2025-11-17 | 2025-11-10 | 2025-11-21 | 10d |  | 52h | 52h | 2,080 | 2,080 | 2,080 |
| 39 | 4.1.1 | Scenariusze testowe (Docs) | manual | 1d | 2025-11-11 A | 2025-11-11 A | 100% |  |  | 2025-11-11 | 2025-11-11 | 1d | Okabe | 8h | 8h | 320 | 320 | 320 |
| 40 | 4.1.2 | Testy manualne interfejsu (UI) | manual | 3.25d | 2025-11-11 A | 2025-11-17 A | 100% |  |  | 2025-11-11 | 2025-11-17 | 3.25d | Okabe | 26h | 26h | 1,040 | 1,040 | 1,040 |
| 41 | 4.1.3 | Testy integracyjne API (Auto) | manual | 2.25d | 2025-11-12 A | 2025-11-17 A | 100% |  |  | 2025-11-12 | 2025-11-17 | 2.25d | Okabe | 18h | 18h | 720 | 720 | 720 |
| 42 | 4.2 | **Optymalizacja wydajności** |  | 10d | 2025-11-10 | 2025-11-21 | 100% | 2025-11-11 | 2025-11-12 | 2025-11-10 | 2025-11-21 | 10d |  | 22.4h | 22.4h | 1,080 | 1,080 | 1,080 |
| 43 | 4.2.1 | Minifikacja kodu JS/CSS | manual | 1d | 2025-11-11 A | 2025-11-11 A | 100% |  |  | 2025-11-11 | 2025-11-11 | 1d | Lucjusz | 8h | 8h | 400 | 400 | 400 |
| 44 | 4.2.2 | Optymalizacja zapytań SQL | manual | 1d | 2025-11-11 A | 2025-11-11 A | 100% |  |  | 2025-11-11 | 2025-11-11 | 1d | Makise | 8h | 8h | 360 | 360 | 360 |
| 45 | 4.2.3 | Audyt wydajności (Lighthouse) | manual | 0.8d | 2025-11-12 A | 2025-11-12 A | 100% |  |  | 2025-11-12 | 2025-11-12 | 0.8d | Lucjusz | 6.4h | 6.4h | 320 | 320 | 320 |
| 46 | 4.3 | **Demo i dokumentacja końcowa** |  | 10d | 2025-11-10 | 2025-11-21 | 100% | 2025-11-11 | 2025-11-13 | 2025-11-10 | 2025-11-21 | 10d |  | 17.6h | 17.6h | 792 | 792 | 792 |
| 47 | 4.3.1 | Przygotowanie prezentacji Demo | manual | 0.5d | 2025-11-11 A | 2025-11-11 A | 100% |  |  | 2025-11-11 | 2025-11-11 | 0.5d | Makise | 4h | 4h | 180 | 180 | 180 |
| 48 | 4.3.2 | Kompletowanie dok. technicznej | manual | 1.7d | 2025-11-12 A | 2025-11-13 A | 100% |  |  | 2025-11-12 | 2025-11-13 | 1.7d | Makise | 13.6h | 13.6h | 612 | 612 | 612 |
